# Construction schedule v1.0

Schedule from an IFC model, 2027-03-01 to 2027-09-30.
Breda Railway Station Extension

## Schedule

| ID | Activity | Type | Duration | Start | Finish | Predecessors | Planned start | Planned finish | Total float | Free float |
| --- | --- | --- | --- | --- | --- | --- | --- | --- | --- | --- |
| 1 | **1. Preparation** |  | 29d | 2027-03-01 | 2027-04-05 |  | 2027-03-01 | 2027-03-05 | 0d |  |
| 1.1 | Phasing of rail traffic |  | 5d | 2027-03-01 | 2027-03-05 |  |  |  | 0d |  |
| 1.2 | Temporary platform facility |  | 8d | 2027-03-06 | 2027-03-15 | 1.1 | 2027-03-01 | 2027-03-10 | 131d | 0d |
| 1.3 | Rail cables and pipes |  | 10d | 2027-03-16 | 2027-03-27 | 1.2 | 2027-03-01 | 2027-03-12 | 131d | 0d |
| 1.4 | Set up site |  | 5d | 2027-03-30 | 2027-04-03 | 1.3 | 2027-03-01 | 2027-03-05 | 131d | 0d |
| 1.5 | Start of works | milestone | 0d | 2027-04-05 | 2027-04-05 | 1.4 | 2027-03-01 | 2027-03-01 | 131d |  |
| 2 | **2. Underpass** |  | 64d | 2027-03-17 | 2027-06-05 |  | 2027-03-01 | 2027-03-05 | 0d |  |
| 2.1 | Sheet piling, tunnel |  | 12d | 2027-03-17 | 2027-04-01 | 1.1 SS+14d | 2027-03-01 | 2027-03-16 | 0d |  |
| 2.2 | Track possession, weekend 1 |  | 3d | 2027-04-02 | 2027-04-05 | 2.1 | 2027-03-01 | 2027-03-03 | 82d | 0d |
| 2.3 | Excavate tunnel box |  | 10d | 2027-04-06 | 2027-04-16 | 2.2 | 2027-03-01 | 2027-03-12 | 82d | 0d |
| 2.4 | Pour tunnel floor |  | 8d | 2027-04-17 | 2027-04-26 | 2.3 | 2027-03-01 | 2027-03-10 | 82d | 0d |
| 2.5 | Pour tunnel walls |  | 10d | 2027-04-28 | 2027-05-11 | 2.4 | 2027-03-01 | 2027-03-12 | 82d | 0d |
| 2.6 | Place precast tunnel roof |  | 5d | 2027-05-12 | 2027-05-18 | 2.5 | 2027-03-01 | 2027-03-05 | 82d | 0d |
| 2.7 | Track possession, weekend 2 |  | 3d | 2027-05-19 | 2027-05-21 | 2.6 | 2027-03-01 | 2027-03-03 | 82d | 0d |
| 2.8 | Tunnel waterproofing |  | 8d | 2027-05-22 | 2027-05-31 | 2.7 | 2027-03-01 | 2027-03-10 | 82d | 0d |
| 2.9 | Backfill over tunnel |  | 5d | 2027-06-01 | 2027-06-05 | 2.8 | 2027-03-01 | 2027-03-05 | 82d |  |
| 3 | **3. Platform structure** |  | 49d | 2027-03-23 | 2027-05-25 |  | 2027-03-01 | 2027-03-05 | 0d |  |
| 3.1 | Prefab platform edges |  | 8d | 2027-03-23 | 2027-04-02 | 2.1 SS | 2027-03-01 | 2027-03-10 | 0d |  |
| 3.2 | Platform infill |  | 5d | 2027-04-03 | 2027-04-08 | 3.1 | 2027-03-01 | 2027-03-05 | 0d |  |
| 3.3 | Lay platform tiles |  | 8d | 2027-04-09 | 2027-04-17 | 3.2 | 2027-03-01 | 2027-03-10 | 0d |  |
| 3.4 | Steel canopy |  | 10d | 2027-04-19 | 2027-04-30 | 3.3 | 2027-03-01 | 2027-03-12 | 0d |  |
| 3.5 | Glass canopy |  | 8d | 2027-05-01 | 2027-05-12 | 3.4 | 2027-03-01 | 2027-03-10 | 0d |  |
| 3.6 | Install stairs and lifts |  | 10d | 2027-05-13 | 2027-05-25 | 3.5 | 2027-03-01 | 2027-03-12 | 0d |  |
| 4 | **4. Station concourse extension** |  | 35d | 2027-05-13 | 2027-06-23 |  | 2027-03-01 | 2027-03-05 | 0d |  |
| 4.1 | Structural steel, hall |  | 12d | 2027-05-13 | 2027-05-27 | 3.6 FS-10d | 2027-03-01 | 2027-03-16 | 0d |  |
| 4.2 | Glass facade and roof |  | 10d | 2027-05-28 | 2027-06-08 | 4.1 | 2027-03-01 | 2027-03-12 | 0d |  |
| 4.3 | Natural stone flooring |  | 8d | 2027-06-09 | 2027-06-17 | 4.2 | 2027-03-01 | 2027-03-10 | 0d |  |
| 4.4 | Shopfronts |  | 5d | 2027-06-18 | 2027-06-23 | 4.3, 3.6 FF+2d | 2027-03-01 | 2027-03-05 | 0d |  |

| ID | Activity | Type | Duration | Start | Finish | Predecessors | Planned start | Planned finish | Total float | Free float |
| --- | --- | --- | --- | --- | --- | --- | --- | --- | --- | --- |
| 5 | **5. Building services** |  | 39d | 2027-06-24 | 2027-08-28 |  | 2027-03-01 | 2027-03-05 | 0d |  |
| 5.1 | Platform power and lighting |  | 8d | 2027-06-24 | 2027-07-02 | 4.4 | 2027-03-01 | 2027-03-10 | 0d |  |
| 5.2 | Passenger information systems |  | 5d | 2027-07-03 | 2027-07-08 | 5.1 | 2027-03-01 | 2027-03-05 | 28d | 0d |
| 5.3 | Install escalators |  | 10d | 2027-07-09 | 2027-07-20 | 5.2 | 2027-03-01 | 2027-03-12 | 28d | 0d |
| 5.4 | Public address system |  | 3d | 2027-07-21 | 2027-07-23 | 5.3 | 2027-03-01 | 2027-03-03 | 28d | 0d |
| 5.5 | CCTV and security |  | 5d | 2027-07-24 | 2027-08-19 | 5.4 | 2027-03-01 | 2027-03-05 | 28d | 0d |
| 5.6 | HVAC installation, hall |  | 8d | 2027-08-20 | 2027-08-28 | 5.5 | 2027-03-01 | 2027-03-10 | 28d |  |
| 6 | **6. Track & finishing** |  | 36d | 2027-07-17 | 2027-09-17 |  | 2027-03-01 | 2027-03-05 | 0d |  |
| 6.1 | Lay track at new platform |  | 10d | 2027-07-17 | 2027-08-18 | 5.1 SS+20d | 2027-03-01 | 2027-03-12 | 0d |  |
| 6.2 | Overhead line portals |  | 8d | 2027-08-19 | 2027-08-27 | 6.1 | 2027-03-01 | 2027-03-10 | 0d |  |
| 6.3 | Overhead line commissioning |  | 5d | 2027-08-28 | 2027-09-02 | 6.2 | 2027-03-01 | 2027-03-05 | 0d |  |
| 6.4 | Signalling and safety systems |  | 5d | 2027-09-03 | 2027-09-08 | 6.3 | 2027-03-01 | 2027-03-05 | 0d |  |
| 6.5 | Painting and finishing |  | 8d | 2027-09-09 | 2027-09-17 | 6.4 | 2027-03-01 | 2027-03-10 | 0d |  |
| 7 | **7. Handover** |  | 11d | 2027-09-18 | 2027-09-30 |  | 2027-03-01 | 2027-03-05 | 0d |  |
| 7.1 | Platform trial operation |  | 5d | 2027-09-18 | 2027-09-23 | 6.5 | 2027-03-01 | 2027-03-05 | 0d |  |
| 7.2 | Remove temporary facilities |  | 5d | 2027-09-24 | 2027-09-29 | 7.1 | 2027-03-01 | 2027-03-05 | 0d |  |
| 7.3 | Station in service | milestone | 0d | 2027-09-30 | 2027-09-30 | 7.2 | 2027-03-01 | 2027-03-01 | 0d |  |
