# Construction schedule v1.0

Schedule from an IFC model, 2027-03-01 to 2027-10-15.
New-Build Primary School (Integrated Child Centre)

## Schedule

| ID | Activity | Type | Duration | Start | Finish | Predecessors | Planned start | Planned finish | Total float | Free float |
| --- | --- | --- | --- | --- | --- | --- | --- | --- | --- | --- |
| 1 | **1. Preparation** |  | 9d | 2027-03-01 | 2027-03-11 |  | 2027-03-01 | 2027-03-05 | 0d |  |
| 1.1 | Prepare construction site |  | 5d | 2027-03-01 | 2027-03-05 |  |  |  | 0d |  |
| 1.2 | Set up site |  | 3d | 2027-03-08 | 2027-03-10 | 1.1 | 2027-03-01 | 2027-03-03 | 135d | 0d |
| 1.3 | Start of construction | milestone | 0d | 2027-03-11 | 2027-03-11 | 1.2 | 2027-03-01 | 2027-03-01 | 135d |  |
| 2 | **2. Foundations** |  | 28d | 2027-03-05 | 2027-04-15 |  | 2027-03-01 | 2027-03-05 | 0d |  |
| 2.1 | Pile driving, foundation piles |  | 10d | 2027-03-05 | 2027-03-18 | 1.1 SS+4d | 2027-03-01 | 2027-03-12 | 0d |  |
| 2.2 | Foundation beams and pile caps |  | 8d | 2027-03-19 | 2027-04-01 | 2.1 | 2027-03-01 | 2027-03-10 | 112d | 0d |
| 2.3 | Below-slab drainage |  | 5d | 2027-04-02 | 2027-04-08 | 2.2 | 2027-03-01 | 2027-03-05 | 112d | 0d |
| 2.4 | Pour ground floor slab |  | 5d | 2027-04-09 | 2027-04-15 | 2.3 | 2027-03-01 | 2027-03-05 | 112d |  |
| 3 | **3. Structural works** |  | 43d | 2027-03-11 | 2027-05-18 |  | 2027-03-01 | 2027-03-05 | 0d |  |
| 3.1 | Ground floor masonry |  | 12d | 2027-03-11 | 2027-03-30 | 2.1 SS | 2027-03-01 | 2027-03-16 | 0d |  |
| 3.2 | Precast upper floor slab |  | 5d | 2027-03-31 | 2027-04-06 | 3.1 | 2027-03-01 | 2027-03-05 | 0d |  |
| 3.3 | Upper floor masonry |  | 10d | 2027-04-07 | 2027-04-20 | 3.2 | 2027-03-01 | 2027-03-12 | 0d |  |
| 3.4 | CLT roof structure |  | 8d | 2027-04-21 | 2027-05-03 | 3.3 | 2027-03-01 | 2027-03-10 | 0d |  |
| 3.5 | EPDM roofing |  | 5d | 2027-05-04 | 2027-05-12 | 3.4 | 2027-03-01 | 2027-03-05 | 0d |  |
| 3.6 | Install sedum roof |  | 3d | 2027-05-13 | 2027-05-18 | 3.5 | 2027-03-01 | 2027-03-03 | 0d |  |
| 3.7 | Topping out | milestone | 0d | 2027-05-18 | 2027-05-18 | 3.6 | 2027-03-01 | 2027-03-01 | 93d |  |
| 4 | **4. Facade & roof** |  | 31d | 2027-05-03 | 2027-06-17 |  | 2027-03-01 | 2027-03-05 | 0d |  |
| 4.1 | ETICS facade insulation |  | 10d | 2027-05-03 | 2027-05-19 | 3.6 FS-9d | 2027-03-01 | 2027-03-12 | 0d |  |
| 4.2 | Aluminium window frames |  | 8d | 2027-05-20 | 2027-05-31 | 4.1 | 2027-03-01 | 2027-03-10 | 0d |  |
| 4.3 | Facade finish, brick slips |  | 8d | 2027-06-01 | 2027-06-10 | 4.2 | 2027-03-01 | 2027-03-10 | 0d |  |
| 4.4 | Roof solar panels |  | 5d | 2027-06-11 | 2027-06-17 | 4.3, 3.6 FF+2d | 2027-03-01 | 2027-03-05 | 0d |  |
| 4.5 | Wind and weathertight | milestone | 0d | 2027-06-17 | 2027-06-17 | 4.4 | 2027-03-01 | 2027-03-01 | 71d |  |
| 5 | **5. Building services** |  | 34d | 2027-06-18 | 2027-08-25 |  | 2027-03-01 | 2027-03-05 | 0d |  |
| 5.1 | Electrical and data |  | 8d | 2027-06-18 | 2027-06-29 | 4.4 | 2027-03-01 | 2027-03-10 | 0d |  |
| 5.2 | Air-to-water heat pump |  | 5d | 2027-06-30 | 2027-07-06 | 5.1 | 2027-03-01 | 2027-03-05 | 37d | 0d |
| 5.3 | Underfloor heating |  | 8d | 2027-07-02 | 2027-07-13 | 5.2 SS+2d | 2027-03-01 | 2027-03-10 | 37d | 0d |
| 5.4 | CO2-controlled ventilation |  | 8d | 2027-07-14 | 2027-07-23 | 5.3 | 2027-03-01 | 2027-03-10 | 37d | 0d |
| 5.5 | Sanitary pipework |  | 5d | 2027-08-16 | 2027-08-20 | 5.4 | 2027-03-01 | 2027-03-05 | 37d | 0d |
| 5.6 | Fire alarm and evacuation |  | 3d | 2027-08-23 | 2027-08-25 | 5.5 | 2027-03-01 | 2027-03-03 | 37d |  |

| ID | Activity | Type | Duration | Start | Finish | Predecessors | Planned start | Planned finish | Total float |
| --- | --- | --- | --- | --- | --- | --- | --- | --- | --- |
| 6 | **6. Fit-out** |  | 44d | 2027-07-15 | 2027-10-05 |  | 2027-03-01 | 2027-03-05 | 0d |
| 6.1 | Internal walls, metal stud |  | 8d | 2027-07-15 | 2027-08-16 | 5.1 SS+19d | 2027-03-01 | 2027-03-10 | 0d |
| 6.2 | Acoustic ceilings |  | 5d | 2027-08-17 | 2027-08-23 | 6.1 | 2027-03-01 | 2027-03-05 | 0d |
| 6.3 | Screed floors |  | 5d | 2027-08-24 | 2027-08-30 | 6.2 | 2027-03-01 | 2027-03-05 | 0d |
| 6.4 | Tiling, sanitary areas |  | 5d | 2027-08-31 | 2027-09-06 | 6.3 | 2027-03-01 | 2027-03-05 | 0d |
| 6.5 | Painting |  | 8d | 2027-09-07 | 2027-09-16 | 6.4 | 2027-03-01 | 2027-03-10 | 0d |
| 6.6 | Linoleum floor finish |  | 5d | 2027-09-17 | 2027-09-23 | 6.5 | 2027-03-01 | 2027-03-05 | 0d |
| 6.7 | Outdoor playground |  | 8d | 2027-09-24 | 2027-10-05 | 6.6 | 2027-03-01 | 2027-03-10 | 0d |
| 7 | **7. Handover** |  | 8d | 2027-10-06 | 2027-10-15 |  | 2027-03-01 | 2027-03-05 | 0d |
| 7.1 | Classroom furnishing |  | 5d | 2027-10-06 | 2027-10-12 | 6.7 | 2027-03-01 | 2027-03-05 | 0d |
| 7.2 | Testing and commissioning |  | 3d | 2027-10-13 | 2027-10-15 | 7.1 | 2027-03-01 | 2027-03-03 | 0d |
| 7.3 | Child centre handover | milestone | 0d | 2027-10-15 | 2027-10-15 | 7.2 | 2027-03-01 | 2027-03-01 | 0d |
